# Cronograma

Schedule from MS Project, 2018-05-28 to 2018-07-06, costs in $, A marks actual dates.

## Calendars

- Standard: Mon-Fri 08:00-12:00, 13:00-17:00; Sat-Sun off.

## Resources

| Resource | Rate | Cost per use |
| --- | --- | --- |
| Eduardo Faggiani | 15 | 15 |
| Gabriel Oraboni Carvalho | 15 | 15 |
| Renam Makoto Aono | 15 | 15 |
| Vinícius de Oliveira Souza | 15 | 15 |
| Ana Caroline Costa Passos | 15 | 15 |
| Cliente |  |  |

## Schedule

| ID | WBS | Task | Duration | Start | Finish | Predecessors | Complete | Remaining | Total slack | Resources | Work | Actual work | Cost | Baseline cost | Actual cost |
| --- | --- | --- | --- | --- | --- | --- | --- | --- | --- | --- | --- | --- | --- | --- | --- |
| 1 | 1 | **SuperMaps** | 29.12d | 2018-05-28 A | 2018-07-06 |  | 48% | 15.14d | 0d |  | 475h | 181h | 7,710 | 7,605 | 2,985 |
| 2 | 1.1 | **Prospecção** | 1.5d | 2018-05-28 A | 2018-05-29 A |  | 100% |  |  |  | 12h | 12h | 210 | 210 | 210 |
| 3 | 1.1.1 | Reunião com o Cliente | 6h | 2018-05-28 A | 2018-05-28 A |  | 100% |  |  | Eduardo Faggiani | 6h | 6h | 105 | 105 | 105 |
| 4 | 1.1.2 | Redigir Ata de Reunião | 6h | 2018-05-28 A | 2018-05-29 A | 3 | 100% |  |  | Ana Caroline Costa Passos | 6h | 6h | 105 | 105 | 105 |
| 5 | 1.2 | **Análise** | 5.5d | 2018-05-29 A | 2018-06-05 A | 4 | 100% |  |  |  | 58h | 58h | 900 | 900 | 900 |
| 6 | 1.2.1 | Redigir Documento de Requisitos | 13h | 2018-05-29 A | 2018-05-31 A | 4 | 100% |  |  | Renam Makoto Aono | 13h | 13h | 210 | 210 | 210 |
| 7 | 1.2.2 | Revisar Documento de Requisitos | 15h | 2018-05-31 A | 2018-06-01 A | 6 | 100% |  |  | Gabriel Oraboni Carvalho | 15h | 15h | 240 | 240 | 240 |
| 8 | 1.2.3 | Aprovação do Cliente | 5h | 2018-06-04 A | 2018-06-04 A | 7 | 100% |  |  | Cliente | 5h | 5h |  |  |  |
| 9 | 1.2.4 | **Projeto** | 1.38d | 2018-06-04 A | 2018-06-05 A | 8 | 100% |  |  |  | 25h | 25h | 450 | 450 | 450 |
| 10 | 1.2.4.1 | **Diagrama de Classes** | 0.88d | 2018-06-04 A | 2018-06-05 A | 8 | 100% |  |  |  | 9h | 9h | 180 | 180 | 180 |
| 11 | 1.2.4.1.1 | Elaborar Diagrama de Classes | 5h | 2018-06-04 A | 2018-06-05 A | 8 | 100% |  |  | Renam Makoto Aono | 5h | 5h | 90 | 90 | 90 |
| 12 | 1.2.4.1.2 | Revisar Diagrama de Classes | 2h | 2018-06-05 A | 2018-06-05 A | 11 | 100% |  |  | Gabriel Oraboni Carvalho | 2h | 2h | 45 | 45 | 45 |
| 13 | 1.2.4.1.3 | Redigir MRB | 2h | 2018-06-04 A | 2018-06-04 A | 8 | 100% |  |  | Ana Caroline Costa Passos | 2h | 2h | 45 | 45 | 45 |
| 14 | 1.2.4.2 | **Modelo entidade relacionamento** | 1.38d | 2018-06-04 A | 2018-06-05 A |  | 100% |  |  |  | 16h | 16h | 270 | 270 | 270 |
| 15 | 1.2.4.2.1 | Elaborar MER | 11h | 2018-06-04 A | 2018-06-05 A | 8 | 100% |  |  | Vinícius de Oliveira Souza | 11h | 11h | 180 | 180 | 180 |
| 16 | 1.2.4.2.2 | Revisar MER | 5h | 2018-06-04 A | 2018-06-05 A | 8 | 100% |  |  | Renam Makoto Aono | 5h | 5h | 90 | 90 | 90 |
| 17 | 1.3 | **Planejamento** | 2.25d | 2018-06-04 A | 2018-06-06 A | 8 | 100% |  |  |  | 26h | 26h | 435 | 435 | 435 |
| 18 | 1.3.1 | Reunir com a Equipe | 1d | 2018-06-04 A | 2018-06-05 A | 8 | 100% |  |  | Gabriel Oraboni Carvalho | 8h | 8h | 135 | 135 | 135 |
| 19 | 1.3.2 | Redigir Plano de Projeto | 10h | 2018-06-04 A | 2018-06-05 A | 8 | 100% |  |  | Eduardo Faggiani | 10h | 10h | 165 | 165 | 165 |
| 20 | 1.3.3 | Redigir EAP | 1d | 2018-06-05 A | 2018-06-06 A | 19 | 100% |  |  | Ana Caroline Costa Passos | 8h | 8h | 135 | 135 | 135 |
| 21 | 1.4 | **Monitoramento e Controle** | 0.75d | 2018-06-06 A | 2018-06-07 A | 20 | 100% |  |  |  | 6h | 6h | 105 | 105 | 105 |
| 22 | 1.4.1 | Definir Processo de Monitoramento e Controle do Projeto | 6h | 2018-06-06 A | 2018-06-07 A | 20 | 100% |  |  | Renam Makoto Aono | 6h | 6h | 105 | 105 | 105 |
| 23 | 1.5 | **Controle de Mudanças** | 1.12d | 2018-06-07 A | 2018-06-08 A | 22 | 100% |  |  |  | 9h | 9h | 150 | 150 | 150 |
| 24 | 1.5.1 | Definir Processo de Mudanças do Projeto | 9h | 2018-06-07 A | 2018-06-08 A | 22 | 100% |  |  | Gabriel Oraboni Carvalho | 9h | 9h | 150 | 150 | 150 |

| ID | WBS | Task | Duration | Start | Finish | Predecessors | Complete | Remaining | Total slack | Resources | Work | Actual work | Cost | Baseline cost | Actual cost |
| --- | --- | --- | --- | --- | --- | --- | --- | --- | --- | --- | --- | --- | --- | --- | --- |
| 25 | 1.6 | **Desenvolvimento** | 18.88d | 2018-06-06 A | 2018-07-03 | 20 | 28% | 13.53d | 2.38d |  | 345h | 70h | 5,610 | 5,505 | 1,185 |
| 26 | 1.6.1 | **Release 1** | 4.62d | 2018-06-06 A | 2018-06-13 A | 20 | 100% |  |  |  | 55h | 55h | 915 | 1,080 | 915 |
| 27 | 1.6.1.1 | Implementar [RF01] Cadastrar Produto | 5h | 2018-06-06 A | 2018-06-07 A | 20 | 100% |  |  | Ana Caroline Costa Passos | 5h | 5h | 90 | 315 | 90 |
| 28 | 1.6.1.2 | Implementar [RF02] Cadastrar Usuário | 10h | 2018-06-06 A | 2018-06-08 A | 20 | 100% |  |  | Eduardo Faggiani | 10h | 10h | 165 |  | 165 |
| 29 | 1.6.1.3 | Implementar [RF03] Consultar Usuário | 6h | 2018-06-08 A | 2018-06-08 A | 28 | 100% |  |  | Vinícius de Oliveira Souza | 6h | 6h | 105 |  | 105 |
| 30 | 1.6.1.4 | Implementar [RF04] Editar Usuário | 7h | 2018-06-08 A | 2018-06-08 A | 28 | 100% |  |  | Renam Makoto Aono | 7h | 7h | 120 |  | 120 |
| 31 | 1.6.1.5 | Implementar [RF05] Remover Usuário | 8h | 2018-06-08 A | 2018-06-11 A | 28 | 100% |  |  | Ana Caroline Costa Passos | 8h | 8h | 135 |  | 135 |
| 32 | 1.6.1.6 | Implementar [RF06] Cadastrar Mapa | 19h | 2018-06-11 A | 2018-06-13 A | 31 | 100% |  |  | Eduardo Faggiani | 19h | 19h | 300 | 420 | 300 |
| 33 | 1.6.2 | **Release 2** | 4.75d | 2018-06-13 A | 2018-06-20 | 26 | 18% | 3.91d | 0d |  | 85h | 15h | 1,410 | 1,140 | 270 |
| 34 | 1.6.2.1 | Implementar [RF07] Editar Mapa | 5h | 2018-06-13 A | 2018-06-14 A | 32 | 100% |  |  | Ana Caroline Costa Passos | 5h | 5h | 90 |  | 90 |
| 35 | 1.6.2.2 | Implementar [RF08] Remover Mapa | 5h | 2018-06-13 A | 2018-06-14 A | 32 | 100% |  |  | Vinícius de Oliveira Souza | 5h | 5h | 90 |  | 90 |
| 36 | 1.6.2.3 | Implementar [RF09] Consultar Mapa | 5h | 2018-06-13 A | 2018-06-14 A | 32 | 100% |  |  | Gabriel Oraboni Carvalho | 5h | 5h | 90 |  | 90 |
| 37 | 1.6.2.4 | Implementar [RF10] Cadastrar Prateleira | 23h | 2018-06-13 | 2018-06-18 | 32 |  |  | 0d | Renam Makoto Aono | 23h |  | 360 | 360 |  |
| 38 | 1.6.2.5 | Implementar [RF11] Editar Prateleira | 8h | 2018-06-18 | 2018-06-19 | 37 |  |  | 0.88d | Vinícius de Oliveira Souza | 8h |  | 135 | 135 |  |
| 39 | 1.6.2.6 | Implementar [RF12] Consultar Prateleira | 9h | 2018-06-18 | 2018-06-19 | 37 |  |  | 0.75d | Renam Makoto Aono | 9h |  | 150 | 150 |  |
| 40 | 1.6.2.7 | Implementar [RF13] Remover Prateleira | 5h | 2018-06-18 | 2018-06-18 | 37 |  |  | 1.25d | Eduardo Faggiani | 5h |  | 90 | 90 |  |
| 41 | 1.6.2.8 | Implementar [RF14] Inserir Prateleira no Mapa | 15h | 2018-06-18 | 2018-06-20 | 37 |  |  | 0d | Gabriel Oraboni Carvalho | 15h |  | 240 | 240 |  |
| 42 | 1.6.2.9 | Implementar [RF15] Inserir Produtos na Prateleira | 10h | 2018-06-18 | 2018-06-19 | 37 |  |  | 0.62d | Ana Caroline Costa Passos | 10h |  | 165 | 165 |  |
| 43 | 1.6.3 | **Release 3** | 4.75d | 2018-06-20 | 2018-06-26 | 33 |  |  | 0d |  | 99h |  | 1,605 | 1,605 |  |
| 44 | 1.6.3.1 | Implementar [RF16] Remover Produto na Prateleira | 1d | 2018-06-20 | 2018-06-21 | 42 |  |  | 0d | Ana Caroline Costa Passos | 8h |  | 135 | 135 |  |
| 45 | 1.6.3.2 | Implementar [RF17] Atualizar Produto na Prateleira | 1d | 2018-06-20 | 2018-06-21 | 42 |  |  | 0d | Vinícius de Oliveira Souza | 8h |  | 135 | 135 |  |
| 46 | 1.6.3.3 | Implementar [RF18] Consultar Produto | 1d | 2018-06-20 | 2018-06-21 | 42 |  |  | 0d | Renam Makoto Aono | 8h |  | 135 | 135 |  |
| 47 | 1.6.3.4 | Implementar [RF19] Localizar Produto no Supermercado | 15h | 2018-06-21 | 2018-06-25 | 42, 44, 45, 46 |  |  | 0d | Eduardo Faggiani; Vinícius de Oliveira Souza | 30h |  | 480 | 480 |  |
| 48 | 1.6.3.5 | Implementar [RF20] Calcular menor caminho para compras | 15h | 2018-06-25 | 2018-06-26 | 47 |  |  | 0d | Gabriel Oraboni Carvalho; Ana Caroline Costa Passos; Eduardo Faggiani | 45h |  | 720 | 720 |  |

| ID | WBS | Task | Duration | Start | Finish | Predecessors | Total slack | Resources | Work | Cost | Baseline cost |
| --- | --- | --- | --- | --- | --- | --- | --- | --- | --- | --- | --- |
| 49 | 1.6.4 | **Release 4** | 4.75d | 2018-06-27 | 2018-07-03 | 48 | 0d |  | 106h | 1,680 | 1,680 |
| 50 | 1.6.4.1 | Implementar [RF21] Emissão do menor caminho | 15h | 2018-06-27 | 2018-06-28 | 48 | 0d | Eduardo Faggiani; Vinícius de Oliveira Souza | 30h | 480 | 480 |
| 51 | 1.6.4.2 | Implementar [RF22] Ranking de Produtos | 15h | 2018-06-27 | 2018-06-28 | 47 | 5.25d | Renam Makoto Aono; Ana Caroline Costa Passos | 30h | 480 | 480 |
| 52 | 1.6.4.3 | Implementar [RF23] Relatório de itens mais visitados no supermercado | 23h | 2018-06-28 | 2018-07-03 | 50 | 0d | Gabriel Oraboni Carvalho; Eduardo Faggiani | 46h | 720 | 720 |
| 53 | 1.7 | **Fechamento** | 2.38d | 2018-07-03 | 2018-07-06 | 52 | 0d |  | 19h | 300 | 300 |
| 54 | 1.7.1 | Documento de Aprovação do Cliente | 19h | 2018-07-03 | 2018-07-06 | 52 | 0d | Ana Caroline Costa Passos | 19h | 300 | 300 |
